# Simple Project Plan

How a schedule from MS Project changed from version to version. A marks actual dates.

## Version 1 (saved 2021-11-19, file 伴行WBS-冯晴晴.mpp)

| ID | WBS | Task | Duration | Start | Finish | Predecessors |
| --- | --- | --- | --- | --- | --- | --- |
| 1 | 1 | **伴行** | 26d | 2021-11-01 | 2021-12-04 |  |
| 2 | 1.1 | **客户模块** | 26d | 2021-11-01 | 2021-12-04 |  |
| 3 | 1.1.1 | **登录注册** | 3d | 2021-11-18 | 2021-11-22 |  |
| 4 |  | 数据库表设计 | 4d | 2021-11-01 | 2021-11-04 |  |
| 5 |  | 注册登录界面设计 | 4d | 2021-11-02 | 2021-11-05 |  |
| 6 |  | 注册登录代码编写 | 6d | 2021-11-08 | 2021-11-15 | 5, 4 |
| 7 |  | 交互测试 | 2d | 2021-11-16 | 2021-11-17 | 6 |
| 8 |  | 文档编写 | 2d | 2021-11-18 | 2021-11-19 | 7 |
| 9 | 1.1.2 | **信息管理模块** | 22d | 2021-11-01 | 2021-11-30 |  |
| 10 |  | 信息管理界面设计 | 4d | 2021-11-02 | 2021-11-05 |  |
| 11 |  | 数据库表设计 | 4d | 2021-11-02 | 2021-11-05 |  |
| 12 |  | 代码编写 | 12d | 2021-11-08 | 2021-11-23 | 11 |
| 13 |  | 交互测试 | 2d | 2021-11-24 | 2021-11-25 | 12 |
| 14 |  | 文档编写 | 2d | 2021-11-26 | 2021-11-29 | 13 |
| 15 | 1.1.3 | **功能模块** | 26d | 2021-11-01 | 2021-12-04 |  |
| 16 |  | 界面设计 | 4d | 2021-11-02 | 2021-11-05 |  |
| 17 |  | 定位功能编写 | 2d | 2021-11-08 | 2021-11-09 | 16 |
| 18 |  | 地点检索编写 | 3d | 2021-11-10 | 2021-11-12 | 17 |
| 19 |  | 路线规划编写 | 2d | 2021-11-15 | 2021-11-16 | 18 |
| 20 |  | 单元测试 | 1d | 2021-11-17 | 2021-11-17 | 19 |
| 21 |  | 文档编写 | 2d | 2021-11-18 | 2021-11-19 | 20 |
| 22 | 1.1.3.7 | **订单部分** | 22d | 2021-11-02 | 2021-12-02 |  |
| 23 |  | 设计数据库表 | 2d | 2021-11-16 | 2021-11-17 |  |
| 24 |  | 创建订单编写 | 4d | 2021-11-17 | 2021-11-22 | 11, 19 |
| 25 |  | 行程显示的编写 | 3d | 2021-11-24 | 2021-11-26 | 24 |
| 26 |  | 结束订单编写 | 3d | 2021-11-24 | 2021-11-26 | 24 |
| 27 |  | 交互测试 | 3d | 2021-11-29 | 2021-12-01 | 26 |
| 28 |  | 文档编写 | 1d | 2021-12-02 | 2021-12-02 | 27 |
| 29 | 1.2 | **陪同师模块** | 12d | 2021-11-20 | 2021-12-04 |  |
| 30 | 1.2.1 | **信息管理模块** | 12d | 2021-11-20 | 2021-12-04 |  |
| 31 |  | 数据库表设计 | 2d | 2021-11-20 | 2021-11-21 |  |
| 32 |  | 信息管理界面设计 | 2d | 2021-11-21 | 2021-11-22 |  |
| 33 |  | 信息管理编码 | 4d | 2021-11-23 | 2021-11-26 | 31, 32 |
| 34 |  | 安全测试设计 | 6d | 2021-11-22 | 2021-11-27 | 31 |
| 35 |  | 测试 | 2d | 2021-11-29 | 2021-11-30 | 33, 34 |
| 36 |  | 文档编写 | 2d | 2021-12-01 | 2021-12-02 | 35 |
| 37 | 1.2.2 | **订单部分** | 7d | 2021-11-27 | 2021-12-04 |  |
| 38 |  | 数据库表设计 | 2d | 2021-11-27 | 2021-11-28 |  |
| 39 |  | 界面设计 | 3d | 2021-11-20 | 2021-11-23 |  |
| 40 |  | 接受订单编写 | 4d | 2021-11-29 | 2021-12-02 | 24, 38, 39 |
| 41 |  | 行程显示编写 | 2d | 2021-11-23 | 2021-11-24 | 24 |
| 42 |  | 交互测试 | 3d | 2021-11-25 | 2021-11-29 | 41 |

## Version 2 (saved 2021-11-26, file 雪梨任务3-冯晴晴.mpp)

Last finish stays 2021-12-04. Complete tasks 0 → 16.

Changed:

| ID | Task | Start | Finish | Duration | Complete | Other |
| --- | --- | --- | --- | --- | --- | --- |
| 1 | **伴行** | 2021-11-01 A |  |  | 0% → 59% | resources none → 服务器; baseline start none → 2021-11-01; baseline finish none → 2021-12-04 |
| 2 | **客户模块** | 2021-11-01 A |  |  | 0% → 86% | baseline start none → 2021-11-01; baseline finish none → 2021-12-04 |
| 3 | **登录注册** |  |  |  | 0% → 100% | baseline start none → 2021-11-18; baseline finish none → 2021-11-22 |
| 4 | 数据库表设计 | 2021-11-01 A | 2021-11-04 A |  | 0% → 100% | baseline start none → 2021-11-01; baseline finish none → 2021-11-04 |
| 5 | 注册登录界面设计 | 2021-11-02 A | 2021-11-05 A |  | 0% → 100% | resources 王璐澈 [50%]; 旬宇欣 [50%] → 王璐澈 [50%]; 荀宇欣 [50%]; baseline start none → 2021-11-02; baseline finish none → 2021-11-05 |
| 6 | 注册登录代码编写 | 2021-11-08 A | 2021-11-15 A |  | 0% → 100% | baseline start none → 2021-11-08; baseline finish none → 2021-11-15 |
| 7 | 交互测试 | 2021-11-16 A | 2021-11-17 A |  | 0% → 100% | baseline start none → 2021-11-16; baseline finish none → 2021-11-17 |
| 8 | 文档编写 | 2021-11-18 A | 2021-11-19 A |  | 0% → 100% | baseline start none → 2021-11-18; baseline finish none → 2021-11-19 |
| 9 | **信息管理模块** |  |  |  | 0% → 90% | baseline start none → 2021-11-01; baseline finish none → 2021-11-30 |
| 10 | 信息管理界面设计 | 2021-11-02 A | 2021-11-05 A |  | 0% → 100% | resources 王璐澈 [50%]; 旬宇欣 [50%] → 王璐澈 [50%]; 荀宇欣 [50%]; baseline start none → 2021-11-02; baseline finish none → 2021-11-05 |
| 11 | 数据库表设计 | 2021-11-02 A | 2021-11-05 A |  | 0% → 100% | baseline start none → 2021-11-02; baseline finish none → 2021-11-05 |
| 12 | 代码编写 | 2021-11-08 A | 2021-11-23 A |  | 0% → 100% | baseline start none → 2021-11-08; baseline finish none → 2021-11-23 |
| 13 | 交互测试 | 2021-11-24 A |  |  | 0% → 80% | resources 旬宇欣 → 荀宇欣; baseline start none → 2021-11-24; baseline finish none → 2021-11-25 |
| 14 | 文档编写 |  |  |  |  | baseline start none → 2021-11-26; baseline finish none → 2021-11-29 |
| 15 | **功能模块** |  |  |  | 0% → 73% | baseline start none → 2021-11-01; baseline finish none → 2021-12-04 |
| 16 | 界面设计 | 2021-11-02 A | 2021-11-05 A |  | 0% → 100% | resources 王璐澈 [50%]; 旬宇欣 [50%] → 王璐澈 [50%]; 荀宇欣 [50%]; baseline start none → 2021-11-02; baseline finish none → 2021-11-05 |
| 17 | 定位功能编写 | 2021-11-08 A | 2021-11-09 A |  | 0% → 100% | baseline start none → 2021-11-08; baseline finish none → 2021-11-09 |
| 18 | 地点检索编写 | 2021-11-10 A | 2021-11-12 A |  | 0% → 100% | baseline start none → 2021-11-10; baseline finish none → 2021-11-12 |
| 19 | 路线规划编写 | 2021-11-15 A | 2021-11-16 A |  | 0% → 100% | baseline start none → 2021-11-15; baseline finish none → 2021-11-16 |
| 20 | 单元测试 | 2021-11-17 A | 2021-11-17 A |  | 0% → 100% | baseline start none → 2021-11-17; baseline finish none → 2021-11-17 |
| 21 | 文档编写 | 2021-11-18 A | 2021-11-19 A |  | 0% → 100% | baseline start none → 2021-11-18; baseline finish none → 2021-11-19 |
| 22 | **订单部分** |  |  |  | 0% → 50% | baseline start none → 2021-11-02; baseline finish none → 2021-12-02 |
| 23 | 设计数据库表 | 2021-11-16 A | 2021-11-17 A |  | 0% → 100% | baseline start none → 2021-11-16; baseline finish none → 2021-11-17 |
| 24 | 创建订单编写 | 2021-11-17 A | 2021-11-22 A |  | 0% → 100% | baseline start none → 2021-11-17; baseline finish none → 2021-11-22 |
| 25 | 行程显示的编写 | 2021-11-24 A |  |  | 0% → 33% | baseline start none → 2021-11-24; baseline finish none → 2021-11-26 |
| 26 | 结束订单编写 | 2021-11-24 A |  |  | 0% → 33% | baseline start none → 2021-11-24; baseline finish none → 2021-11-26 |
| 27 | 交互测试 |  |  |  |  | baseline start none → 2021-11-29; baseline finish none → 2021-12-01 |
| 28 | 文档编写 |  |  |  |  | baseline start none → 2021-12-02; baseline finish none → 2021-12-02 |
| 29 | **陪同师模块** |  |  |  |  | baseline start none → 2021-11-20; baseline finish none → 2021-12-04 |
| 30 | **信息管理模块** |  |  |  |  | baseline start none → 2021-11-20; baseline finish none → 2021-12-04 |
| 31 | 数据库表设计 |  |  |  |  | baseline start none → 2021-11-20; baseline finish none → 2021-11-21 |
| 32 | 信息管理界面设计 |  |  |  |  | resources 王璐澈 [50%]; 旬宇欣 [50%] → 王璐澈 [50%]; 荀宇欣 [50%]; baseline start none → 2021-11-21; baseline finish none → 2021-11-22 |
| 33 | 信息管理编码 |  |  |  |  | baseline start none → 2021-11-23; baseline finish none → 2021-11-26 |
| 34 | 安全测试设计 |  | 2021-11-27 → 2021-11-30 (+3d) | 6d → 7d |  | baseline start none → 2021-11-22; baseline finish none → 2021-11-30 |
| 35 | 测试 |  |  |  |  | baseline start none → 2021-11-29; baseline finish none → 2021-11-30 |
| 36 | 文档编写 |  |  |  |  | baseline start none → 2021-12-01; baseline finish none → 2021-12-02 |
| 37 | **订单部分** |  |  |  |  | baseline start none → 2021-11-27; baseline finish none → 2021-12-04 |
| 38 | 数据库表设计 |  |  |  |  | baseline start none → 2021-11-27; baseline finish none → 2021-11-28 |
| 39 | 界面设计 |  |  |  |  | baseline start none → 2021-11-20; baseline finish none → 2021-11-23 |
| 40 | 接受订单编写 |  |  |  |  | baseline start none → 2021-11-29; baseline finish none → 2021-12-02 |
| 41 | 行程显示编写 |  |  |  |  | baseline start none → 2021-11-23; baseline finish none → 2021-11-24 |
| 42 | 交互测试 |  |  |  |  | baseline start none → 2021-11-25; baseline finish none → 2021-11-29 |
